# Proyect-Web-Temp-CinesUnidos

Schedule from MS Project, 2013-08-26 to 2013-09-18, 6 hours a day, A marks actual dates.

## Calendars

- Calendario Proyecto WEB Temporal Cines unidos: Mon 08:00-12:00, 14:00-15:00; Tue-Fri 08:00-12:00, 13:00-17:00; Sat-Sun off.

## Resources

| Resource |
| --- |
| Pedro Balestrini |
| Anmari Girón |
| Carlos Rodríguez |
| Cines Unidos |
| Diseñador |
| Maquetador |
| Maquetador-2 |
| Programador |

## Schedule

| ID | WBS | Task | Type | Duration | Start | Finish | Predecessors | Complete | Remaining | Total slack | Free slack | Constraint | Resources | Work | Actual work |
| --- | --- | --- | --- | --- | --- | --- | --- | --- | --- | --- | --- | --- | --- | --- | --- |
| 1 | 1 | Proyecto Web Temporal CU |  | 21d | 2013-08-26 08:00 | 2013-09-18 10:00 |  |  |  | 0d |  |  |  |  |  |
| 2 | 2 | **Diseño** |  | 8.04d? | 2013-08-26 08:00 A | 2013-09-03 15:15 |  | 33% | 5.38d? |  |  |  | Diseñador | 90.1h | 25.6h |
| 3 | 2.1 | Home |  | 8h | 2013-08-26 08:00 A | 2013-08-27 11:00 A |  | 100% |  |  |  |  | Diseñador | 8h | 8h |
| 4 | 2.2 | Aprobación o Ajustes Solicitados por CU |  | 8h | 2013-08-27 11:00 A | 2013-08-28 11:00 A | 3 | 100% |  |  |  |  | Cines Unidos | 1.6h | 1.6h |
| 5 | 2.3 | Compra por película |  | 4h | 2013-08-28 11:00 | 2013-08-28 16:00 | 4 |  |  | -17d | 0d |  | Diseñador | 4h |  |
| 6 | 2.4 | Aprobación o Ajustes Solicitados por CU | milestone | 0min | 2013-08-28 16:00 | 2013-08-28 16:00 | 5 |  |  | -16.83d | 0d |  | Cines Unidos |  |  |
| 7 | 2.5 | Compra por cines |  | 5h | 2013-08-28 16:00 | 2013-08-29 12:00 | 5, 6 |  |  | -16.83d | 0d | start no earlier than 2013-08-27 15:00 | Diseñador | 5h |  |
| 8 | 2.6 | Aprobación o Ajustes Solicitados por CU | milestone | 0min | 2013-08-29 12:00 | 2013-08-29 12:00 | 7 |  |  | -16.33d | 0d |  | Cines Unidos |  |  |
| 9 | 2.7 | Detalle de película |  | 3h | 2013-08-29 13:00 | 2013-08-29 16:00 | 7, 8 |  |  | -16.33d | 0d |  | Diseñador | 3h |  |
| 10 | 2.8 | Aprobación o Ajustes Solicitados por CU | milestone | 0min | 2013-08-29 16:00 | 2013-08-29 16:00 | 9 |  |  | -15.67d | 0d |  | Cines Unidos |  |  |
| 11 | 2.9 | Lightbox detalle de película |  | 2h | 2013-08-29 16:00 | 2013-08-30 09:00 | 9, 10 |  |  | -15.67d | 0d |  | Diseñador | 2h |  |
| 12 | 2.10 | Aprobación o Ajustes Solicitados por CU | milestone | 0min | 2013-08-30 09:00 | 2013-08-30 09:00 | 11 |  |  | -14.08d | 0d |  | Cines Unidos |  |  |
| 13 | 2.11 | Próximos estrenos |  | 1h | 2013-08-30 09:00 | 2013-08-30 10:00 | 11, 5, 12 |  |  | -14.08d | 0d |  | Diseñador | 1h |  |
| 14 | 2.12 | Aprobación o Ajustes Solicitados por CU | milestone | 0min | 2013-08-30 10:00 | 2013-08-30 10:00 | 13 |  |  | -14.08d | 0d |  | Cines Unidos |  |  |
| 15 | 2.13 | Lightbox detalle de promociones |  | 30min | 2013-08-30 10:00 | 2013-08-30 10:30 | 11, 13, 14 |  |  | -14.08d | 0d |  | Diseñador | 0.5h |  |
| 16 | 2.14 | Aprobación o Ajustes Solicitados por CU | milestone | 0min | 2013-08-30 10:30 | 2013-08-30 10:30 | 15 |  |  | -13.75d | 0d |  | Cines Unidos |  |  |
| 17 | 2.15 | Contáctenos |  | 1h | 2013-08-30 10:30 | 2013-08-30 11:30 | 15, 16 |  |  | -13.75d | 0d | start no earlier than 2013-08-29 10:00 | Diseñador | 1h |  |
| 18 | 2.16 | Aprobación o Ajustes Solicitados por CU | milestone | 0min | 2013-08-30 11:30 | 2013-08-30 11:30 | 17 |  |  | -12.92d | 0d |  | Cines Unidos |  |  |
| 19 | 2.17 | Acceso de usuario |  | 1h | 2013-08-30 11:30 | 2013-08-30 13:30 | 17, 18 |  |  | -12.92d | 0d |  | Diseñador | 1h |  |
| 20 | 2.18 | Aprobación o Ajustes Solicitados por CU | milestone | 0min | 2013-08-30 13:30 | 2013-08-30 13:30 | 19 |  |  | -12.25d | 0d |  | Cines Unidos |  |  |
| 21 | 2.19 | Registro de usuario |  | 1h | 2013-08-30 13:30 | 2013-08-30 14:30 | 19, 20 |  |  | -12.25d | 0d |  | Diseñador | 1h |  |
| 22 | 2.20 | Aprobación o Ajustes Solicitados por CU | milestone | 0min | 2013-08-30 14:30 | 2013-08-30 14:30 | 21 |  |  | -11d | 0d |  | Cines Unidos |  |  |
| 23 | 2.21 | Confirmación de registro exitoso |  | 30min | 2013-08-30 14:30 | 2013-08-30 15:00 | 21, 22 |  |  | -11d | 0d |  | Diseñador | 0.5h |  |
| 24 | 2.22 | Aprobación o Ajustes Solicitados por CU | milestone | 0min | 2013-08-30 15:00 | 2013-08-30 15:00 | 23 |  |  | -11d | 0d |  | Cines Unidos |  |  |
| 25 | 2.23 | Plantilla email confirmado registro exitoso |  | 1h | 2013-08-30 15:00 | 2013-08-30 16:00 | 23, 24 |  |  | -11d | 0d |  | Diseñador | 1h |  |
| 26 | 2.24 | Aprobación o Ajustes Solicitados por CU | milestone | 0min | 2013-08-30 16:00 | 2013-08-30 16:00 | 25 |  |  | -11d | 0d |  | Cines Unidos |  |  |
| 27 | 2.25 | Selección de entradas |  | 3h | 2013-08-30 16:00 | 2013-09-02 10:00 | 25, 26 |  |  | -11d | 0d |  | Diseñador | 3h |  |
| 28 | 2.26 | Aprobación o Ajustes Solicitados por CU | milestone | 0min | 2013-09-02 10:00 | 2013-09-02 10:00 | 27 |  |  | -10.67d | 0d |  |  |  |  |
| 29 | 2.27 | Selección de butacas |  | 4h | 2013-09-02 10:00 | 2013-09-03 09:00 | 27, 28 |  |  | -10.67d | 0d |  | Diseñador | 4h |  |
| 30 | 2.28 | Aprobación o Ajustes Solicitados por CU | milestone | 0min | 2013-09-03 09:00 | 2013-09-03 09:00 | 29 |  |  | -10.33d | 0d |  | Cines Unidos |  |  |
| 31 | 2.29 | Datos de compra |  | 3h | 2013-09-03 09:00 | 2013-09-03 12:00 | 29, 30 |  |  | -10.33d | 0d |  | Diseñador | 3h |  |
| 32 | 2.30 | Aprobación o Ajustes Solicitados por CU | milestone | 0min | 2013-09-03 12:00 | 2013-09-03 12:00 | 31 |  |  | -9.71d | 0d |  | Cines Unidos |  |  |
| 33 | 2.31 | Compra satisfactoria |  | 15min | 2013-09-03 13:00 | 2013-09-03 13:15 | 31, 32 |  |  | -9.71d | 0d |  | Diseñador | 0.25h |  |
| 34 | 2.32 | Aprobación o Ajustes Solicitados por CU | milestone | 0min | 2013-09-03 13:15 | 2013-09-03 13:15 | 33 |  |  | -9.58d | 0d |  | Cines Unidos |  |  |
| 35 | 2.33 | Compra rechazada |  | 15min | 2013-09-03 13:15 | 2013-09-03 13:30 | 33, 34 |  |  | -9.58d | 0d |  | Diseñador | 0.25h |  |
| 36 | 2.34 | Aprobación o Ajustes Solicitados por CU | milestone | 0min | 2013-09-03 13:30 | 2013-09-03 13:30 | 35 |  |  | -9.5d | 0d |  | Cines Unidos |  |  |
| 37 | 2.35 | Plantilla email de comprobante de compra |  | 30min | 2013-09-03 13:30 | 2013-09-03 14:00 | 25, 35, 36 |  |  | -9.5d | 0d |  | Diseñador | 0.5h |  |
| 38 | 2.36 | Aprobación o Ajustes Solicitados por CU | milestone | 0min | 2013-09-03 13:30 | 2013-09-03 13:30 | 36 |  |  | -8.79d | 0d |  | Cines Unidos |  |  |
| 39 | 2.37 | Pantalla de error |  | 15min | 2013-09-03 14:00 | 2013-09-03 14:15 | 37, 38 |  |  | -8.88d | 0d |  | Diseñador | 0.25h |  |
| 40 | 2.38 | Aprobación o Ajustes Solicitados por CU | milestone | 0min | 2013-09-03 14:15 | 2013-09-03 14:15 | 39 |  |  | -8.79d | 0d |  | Cines Unidos |  |  |
| 41 | 2.39 | Imagen de fondo previo a carga de imagen (logo CU) |  | 15min | 2013-09-03 14:15 | 2013-09-03 14:30 | 39, 5, 40 |  |  | -8.79d | 0d |  | Diseñador | 0.25h |  |
| 42 | 2.40 | Aprobación o Ajustes Solicitados por CU | milestone | 0min | 2013-09-03 14:30 | 2013-09-03 14:30 | 41 |  |  | -8.79d | 0d |  | Cines Unidos |  |  |
| 43 | 2.41 | Ventana emergente - Recordar contraseña |  | 15min | 2013-09-03 14:30 | 2013-09-03 14:45 | 41, 42 |  |  | -8.79d | 0d |  | Diseñador | 0.25h |  |
| 44 | 2.42 | Aprobación o Ajustes Solicitados por CU | milestone | 0min | 2013-09-03 14:45 | 2013-09-03 14:45 | 43 |  |  | -8.54d | 0d |  | Cines Unidos |  |  |
| 45 | 2.43 | Ventana emergente - Recordar correo |  | 15min | 2013-09-03 14:45 | 2013-09-03 15:00 | 43, 44 |  |  | -8.54d | 0d |  | Diseñador | 0.25h |  |
| 46 | 2.44 | Aprobación o Ajustes Solicitados por CU | milestone | 0min | 2013-09-03 15:00 | 2013-09-03 15:00 | 45 |  |  | -8.54d | 0d |  | Cines Unidos |  |  |
| 47 | 2.45 | Lightbox emergente de espera respuesta del banco |  | 15min | 2013-09-03 15:00 | 2013-09-03 15:15 | 45, 46 |  |  | -8.54d | 0d |  | Diseñador | 0.25h |  |

| ID | WBS | Task | Duration | Start | Finish | Predecessors | Total slack | Free slack | Constraint | Resources | Work |
| --- | --- | --- | --- | --- | --- | --- | --- | --- | --- | --- | --- |
| 48 | 3 | **Maquetación/Responsive** | 0d | 2013-08-26 08:00 | 2013-08-26 08:00 |  |  |  |  | Maquetador | 92h |
| 49 | 3.1 | Home | 10h | 2013-08-27 11:00 | 2013-08-28 14:00 | 3 | -16.67d | 0d |  | Maquetador | 10h |
| 50 | 3.2 | Compra por película | 6h | 2013-08-28 16:00 | 2013-08-29 14:00 | 49, 5 | -17d | 0d |  | Maquetador | 6h |
| 51 | 3.3 | Compra por cines nivel nacional | 6h | 2013-08-29 14:00 | 2013-08-30 11:00 | 49, 7, 50 | -17d | 0d |  | Maquetador | 6h |
| 52 | 3.4 | Detalle de película | 6h | 2013-08-30 11:00 | 2013-09-02 09:00 | 49, 9, 51 | -17d | 0d |  | Maquetador | 6h |
| 53 | 3.5 | Lightbox detalle de película | 6h | 2013-09-02 09:00 | 2013-09-03 10:00 | 52, 11 | -17d | 0d |  | Maquetador | 6h |
| 54 | 3.6 | Próximos estrenos | 5h | 2013-09-03 10:00 | 2013-09-03 16:00 | 49, 5, 53 | -17d | 0d |  | Maquetador | 5h |
| 55 | 3.7 | Lightbox detalle de promociones | 3h | 2013-09-03 16:00 | 2013-09-04 10:00 | 15, 54 | -17d | 0d |  | Maquetador | 3h |
| 56 | 3.8 | Contáctenos | 6h | 2013-09-04 10:00 | 2013-09-04 17:00 | 49, 17, 55 | -17d | 0d |  | Maquetador | 6h |
| 57 | 3.9 | Acceso de usuario | 5h | 2013-09-05 08:00 | 2013-09-05 14:00 | 49, 19, 56 | -17d | 0d |  | Maquetador-2 | 5h |
| 58 | 3.10 | Registro de usuario | 8h | 2013-09-05 14:00 | 2013-09-06 14:00 | 49, 57, 21 | -17d | 0d | start no earlier than 2013-08-28 08:00 | Maquetador-2 | 8h |
| 59 | 3.11 | Confirmación de registro exitoso | 1h | 2013-09-06 14:00 | 2013-09-06 15:00 | 49, 58, 23 | -17d | 0d |  | Maquetador-2 | 1h |
| 60 | 3.12 | Plantilla email confirmado registro exitoso | 3h | 2013-09-06 15:00 | 2013-09-09 09:00 | 59, 25 | -17d | 0d |  | Maquetador-2 | 3h |
| 61 | 3.13 | Selección de cantidad de entradas | 6h | 2013-09-09 09:00 | 2013-09-10 10:00 | 27, 60 | -17d | 0d |  | Maquetador-2 | 6h |
| 62 | 3.14 | Selección de butacas | 5h | 2013-09-10 10:00 | 2013-09-10 16:00 | 61, 29 | -17d | 0d |  | Maquetador-2 | 5h |
| 63 | 3.15 | Datos de compra | 4h | 2013-09-10 16:00 | 2013-09-11 11:00 | 62, 31 | -17d | 0d |  | Maquetador-2 | 4h |
| 64 | 3.16 | Compra satisfactoria | 1h | 2013-09-11 11:00 | 2013-09-11 12:00 | 63, 33 | -17d | 0d |  | Maquetador-2 | 1h |
| 65 | 3.17 | Compra rechazada | 1h | 2013-09-11 13:00 | 2013-09-11 14:00 | 64, 35 | -17d | 0d |  | Maquetador-2 | 1h |
| 66 | 3.18 | Plantilla email de comprobante de compra | 4h | 2013-09-11 14:00 | 2013-09-12 09:00 | 37, 65 | -17d | 0d |  | Maquetador-2 | 4h |
| 67 | 3.19 | Pantalla de error | 1h | 2013-09-12 09:00 | 2013-09-12 10:00 | 39, 66 | -17d | 0d |  | Maquetador-2 | 1h |
| 68 | 3.20 | Ventana emergente - Recordar contraseña | 1h | 2013-09-12 10:00 | 2013-09-12 11:00 | 43, 67 | -17d | 0d |  | Maquetador-2 | 1h |
| 69 | 3.21 | Ventana emergente - Recordar correo | 1h | 2013-09-12 11:00 | 2013-09-12 12:00 | 68 | -17d | 0d |  | Maquetador-2 | 1h |
| 70 | 3.22 | Lightbox emergente de espera respuesta del banco | 3h | 2013-09-12 13:00 | 2013-09-12 16:00 | 47, 69 | -17d | 0d |  | Maquetador-2 | 3h |
| 71 | 4 | **Desarrollo de funcionalidades** | 0d | 2013-08-26 08:00 | 2013-08-26 08:00 |  |  |  |  | Programador | 28h |
| 72 | 4.1 | Slider home | 4h | 2013-08-28 14:00 | 2013-08-29 09:00 | 49 | -5.33d | 0d |  | Programador | 4h |
| 73 | 4.2 | Poll down ciudades | 2h | 2013-08-29 09:00 | 2013-08-29 11:00 | 72 | -5.33d | 0d |  | Programador | 2h |
| 74 | 4.3 | Greybox de uso general | 4h | 2013-08-29 09:00 | 2013-08-29 14:00 | 72 | -4.33d | 0d |  | Programador | 4h |
| 75 | 4.4 | JQuery de lista de películas | 8h | 2013-09-02 09:00 | 2013-09-03 12:00 | 52, 73 | -7.67d | 0d |  | Programador | 8h |
| 76 | 4.5 | JQuery de menú | 3h | 2013-08-28 14:00 | 2013-08-28 17:00 | 49 | -4.67d | 0d |  | Programador | 3h |
| 77 | 4.6 | JQuery efecto aumento en póster del home | 2h | 2013-08-29 08:00 | 2013-08-29 10:00 | 49, 76 | -4.67d | 0d |  | Programador | 2h |
| 78 | 4.7 | Proceso de pago en pasos | 5h | 2013-09-11 11:00 | 2013-09-11 17:00 | 61, 62, 63, 77 | -15.83d | 0d |  | Programador | 5h |

| ID | WBS | Task | Type | Duration | Start | Finish | Predecessors | Total slack | Free slack | Resources | Work |
| --- | --- | --- | --- | --- | --- | --- | --- | --- | --- | --- | --- |
| 79 | 5 | **Pruebas generales** |  | 6d? | 2013-08-26 08:00 | 2013-08-30 16:00 |  |  |  | Programador | 48h |
| 80 | 5.1 | Pruebas plantillas web |  | 4h | 2013-09-12 08:00 | 2013-09-12 12:00 | 78 | -10.5d | 0d | Programador | 4h |
| 81 | 5.2 | Pruebas funcionalidades |  | 4h | 2013-09-12 08:00 | 2013-09-12 12:00 | 72, 49, 73, 75, 76, 77, 78 | -10.5d | 0d | Programador | 4h |
| 82 | 5.3 | Pruebas comportamiento Responsive |  | 4h | 2013-09-12 16:00 | 2013-09-13 11:00 | 49, 50, 51, 52, 53, 54, 55, 56, 57, 58, 59, 61, 62, 63, 64, 65, 67, 68, 69, 70 | -11.67d | 0d | Programador | 4h |
| 83 | 6 | Pruebas en dispositivos |  | 16h | 2013-09-13 11:00 | 2013-09-17 15:00 | 82 | 0.67d |  | Programador | 16h |
| 84 | 7 | Fin de Proyecto | milestone | 0d | 2013-08-26 08:00 | 2013-08-26 08:00 |  | 21d |  | Programador |  |
